Schedule from GanttProject, 2004-12-30 to 2006-01-02.

## Calendars

- Project calendar: Mon-Fri working; Sat-Sun off.

## Resources

| Resource |
| --- |
| Mike |
| Nelson |
| Frank |
| Nick |
| Phil |
| Mark D |
| Rob Swaters |
| NSA Team |
| Unknown |

## Schedule

| ID | WBS | Task | Duration | Start | Finish | Predecessors | Complete | Resources |
| --- | --- | --- | --- | --- | --- | --- | --- | --- |
| 1 | 1 | **Interface Documentation** | 124d | 2005-07-12 | 2005-12-30 |  | 14% |  |
| 2 | 1.1 | Monsoon/DHS ICD | 10d | 2005-07-18 | 2005-07-29 |  | 90% | Nelson |
| 3 | 1.2 | AE+QL/DHS Interface | 17d | 2005-09-12 | 2005-10-04 |  |  | Nelson; Frank |
| 4 | 1.3 | Archive/DHS Interface | 14d | 2005-11-01 | 2005-11-18 |  |  | Nelson; NSA Team |
| 5 | 1.4 | AE/QL User Documentation | 22d | 2005-12-01 | 2005-12-30 |  |  | Nelson; Frank |
| 6 | 1.5 | **Misc Design Docs** | 10d | 2005-07-12 | 2005-07-25 |  |  |  |
| 7 | 1.5.1 | Buffer Manager Design | 10d | 2005-07-12 | 2005-07-25 |  |  | Mike |
| 8 | 2 | **Data Capture System** | 189d | 2004-12-30 | 2005-09-20 |  | 5% |  |
| 9 | 2.1 | **DHS/NEWFIRM API** | 28d | 2005-07-12 | 2005-08-18 |  | 33% |  |
| 10 | 2.1.1 | PseudoCode | 9d | 2005-07-12 | 2005-07-22 |  | 66% | Mike |
| 11 | 2.1.2 | ICD Document | 5d | 2005-07-25 | 2005-07-29 | 10 | 70% | Nelson |
| 12 | 2.1.3 | Implementation/Testing | 14d | 2005-08-01 | 2005-08-18 | 10, 11 |  | Nelson |
| 13 | 2.2 | **DHS Supervisor** | 27d | 2005-08-01 | 2005-09-06 |  |  |  |
| 14 | 2.2.1 | Design | 10d | 2005-08-01 | 2005-08-12 |  |  | Mike |
| 15 | 2.2.2 | implementation/Testing | 17d | 2005-08-15 | 2005-09-06 | 7, 14 |  | Nelson; Mike [50%] |
| 16 | 2.3 | **DCA Collector** | 27d | 2005-08-01 | 2005-09-06 |  |  |  |
| 17 | 2.3.1 | Design | 10d | 2005-08-01 | 2005-08-12 |  |  | Mike |
| 18 | 2.3.2 | Implementation/Testing | 17d | 2005-08-15 | 2005-09-06 | 7, 17 |  | Nelson |
| 19 | 2.4 | **DCA Feed** | 14d | 2005-05-17 | 2005-06-03 |  |  |  |
| 20 | 2.4.1 | Shared Mem Interface | 4d | 2005-05-17 | 2005-05-20 |  |  |  |
| 21 | 2.4.2 | Pixel Unscrambler | 4d | 2005-05-24 | 2005-05-27 |  |  |  |
| 22 | 2.4.3 | RTD Client | 4d | 2005-05-31 | 2005-06-03 |  |  |  |
| 23 | 2.5 | **FITSGenerator/KTM** | 1d | 2005-06-20 | 2005-06-20 |  |  |  |
| 24 | 2.5.1 | SIF Generation | 1d | 2005-06-20 | 2005-06-20 |  |  |  |

| ID | WBS | Task | Type | Duration | Start | Finish | Predecessors | Complete | Resources |
| --- | --- | --- | --- | --- | --- | --- | --- | --- | --- |
| 25 | 2.6 | **Runtime MetaData DB** |  | 9d | 2005-03-16 | 2005-03-28 |  |  |  |
| 26 | 2.6.1 | DB Specification |  | 4d | 2005-03-16 | 2005-03-21 |  |  |  |
| 27 | 2.6.2 | DB Implementation |  | 4d | 2005-03-23 | 2005-03-28 |  |  |  |
| 28 | 2.7 | **Simulators** |  | 14d | 2005-09-01 | 2005-09-20 |  |  |  |
| 29 | 2.7.1 | Simulator Design |  | 2d | 2005-09-07 | 2005-09-08 |  |  | Nelson |
| 30 | 2.7.2 | Instrument Simulator |  | 4d | 2005-09-09 | 2005-09-14 | 29 |  | Nelson |
| 31 | 2.7.3 | DHS Simulator |  | 4d | 2005-09-01 | 2005-09-06 | 29SF |  | Nelson |
| 32 | 2.7.4 | Recovery Simulator |  | 4d | 2005-09-15 | 2005-09-20 | 30, 31 |  | Nelson |
| 33 | 2.8 | **Image Display** |  | 52d | 2004-12-30 | 2005-03-11 |  |  | Mike |
| 34 | 2.8.1 | 24-bit Support |  | 42d | 2004-12-30 | 2005-02-25 |  |  | Mike |
| 35 | 2.8.2 | Client Display Tools |  | 21d | 2005-02-11 | 2005-03-11 |  |  | Mike |
| 36 | 3 | Delivery | milestone | 0d | 2005-09-07 | 2005-09-07 | 12, 15, 18 |  |  |
| 37 | 4 | **Quick Look Environment** |  | 1d | 2005-07-18 | 2005-07-18 |  |  |  |
| 38 | 4.1 | Design |  | 1d | 2005-07-18 | 2005-07-18 |  |  |  |
| 39 | 4.2 | Implementation/Testing |  | 1d | 2005-07-18 | 2005-07-18 |  |  |  |
| 40 | 4.3 | Control/Monitor GUIs |  | 1d | 2005-07-18 | 2005-07-18 |  |  | Mike; Frank |
| 41 | 5 | **Astronomer Environment** |  | 1d | 2005-07-18 | 2005-07-18 |  | 20% |  |
| 42 | 5.1 | **Design** |  | 1d | 2005-07-18 | 2005-07-18 |  | 60% |  |
| 43 | 5.1.1 | AE/Toolbox Spec |  | 1d | 2005-07-18 | 2005-07-18 |  | 100% | Frank |
| 44 | 5.1.2 | IRPROC Spec |  | 1d | 2005-07-18 | 2005-07-18 |  | 20% | Mark D; Frank [10%] |
| 45 | 5.2 | **Implementation** |  | 1d | 2005-07-18 | 2005-07-18 |  |  |  |
| 46 | 5.2.1 | NIR Artificial Data Generator |  | 1d | 2005-07-18 | 2005-07-18 |  |  | Rob Swaters |
| 47 | 5.2.2 | IRRED/IRPROC |  | 1d | 2005-07-18 | 2005-07-18 |  |  | Frank |
| 48 | 5.3 | Testing |  | 1d | 2005-07-18 | 2005-07-18 |  |  |  |

Notes:
- 35: Plug-in tools for statistics, display stream proxy/splitter, etc

| ID | WBS | Task | Duration | Start | Finish | Complete | Resources |
| --- | --- | --- | --- | --- | --- | --- | --- |
| 49 | 6 | **Constraints** | 116d | 2005-07-25 | 2006-01-02 | 100% |  |
| 50 | 6.1 | Travel1 | 5d | 2005-07-25 | 2005-07-29 | 100% | Mike |
| 51 | 6.2 | NVO Summer School | 8d | 2005-09-06 | 2005-09-15 | 100% | Mike; Frank |
| 52 | 6.3 | ADASS/IVOA | 6d | 2005-10-03 | 2005-10-10 | 100% | Nelson |
| 53 | 6.4 | Travel2 | 11d | 2005-12-19 | 2006-01-02 | 100% | Mike |
